id,phase,task,start,end,depends_on,milestone,status,critical,duration_days
T1,1 Discovery & Requirements,Business problem & product brief,2026-10-29,2026-10-29,,,Done,Y,1
T2,1 Discovery & Requirements,Dataset selection & profiling,2026-10-30,2026-10-30,T1,,Done,Y,1
T3,1 Discovery & Requirements,MVP scope & BRD,2026-10-30,2026-10-30,T2,,Done,Y,1
M1,1 Discovery & Requirements,Requirements reviewed by mentor,2026-10-30,2026-10-30,T3,Y,In review,Y,0
T4,2 Technical Design,Architecture & decision log,2026-10-30,2026-10-30,T3,,Done,Y,1
T5,2 Technical Design,Model selection (test 2 models on 20 reviews),2026-11-02,2026-11-02,T4,,Not started,N,1
T6,2 Technical Design,Data structure + output schema + taxonomy.yaml,2026-11-02,2026-11-02,T4,,Not started,Y,1
T7,2 Technical Design,Prompt v1,2026-11-03,2026-11-03,T6,,Not started,Y,1
T8,2 Technical Design,UI wireframe,2026-11-03,2026-11-03,T3,,Not started,N,1
M2,2 Technical Design,Design complete,2026-11-03,2026-11-03,T5;T7;T8,Y,Not started,Y,0
T9,3 Development,CSV upload & validation,2026-11-04,2026-11-04,M2,,Not started,N,1
T10,3 Development,Redaction & batching,2026-11-04,2026-11-04,M2,,Not started,Y,1
T11,3 Development,AI integration (LLM calls + schema check + retry),2026-11-05,2026-11-05,T7;T10,,Not started,Y,1
T12,3 Development,Analysis engine (counts + ranking + quotes + baseline),2026-11-06,2026-11-06,T11,,Not started,Y,1
T13,3 Development,Dashboard + evidence display + export,2026-11-09,2026-11-10,T12;T8,,Not started,Y,2
M3,3 Development,MVP feature-complete,2026-11-10,2026-11-10,T9;T13,Y,Not started,Y,0
T14,4 AI Evaluation,Build evaluation set (hand-label 50 reviews),2026-11-03,2026-11-04,T6,,Not started,N,2
T15,4 AI Evaluation,Test classification & sentiment,2026-11-11,2026-11-11,M3;T14,,Not started,Y,1
T17,4 AI Evaluation,Measure latency & cost,2026-11-11,2026-11-11,M3,,Not started,N,1
T16,4 AI Evaluation,Failure analysis + prompt v2 + re-test,2026-11-12,2026-11-12,T15,,Not started,Y,1
M4,4 AI Evaluation,Quality gate (≥85% accuracy),2026-11-12,2026-11-12,T16;T17,Y,Not started,Y,0
T18,5 QA & UAT,Functional testing,2026-11-11,2026-11-11,M3,,Not started,N,1
T19,5 QA & UAT,UAT (cases + run),2026-11-13,2026-11-13,M4;T18,,Not started,Y,1
T20,5 QA & UAT,Bug fixing,2026-11-16,2026-11-16,T19,,Not started,Y,1
M5,5 QA & UAT,UAT sign-off,2026-11-16,2026-11-16,T20,Y,Not started,Y,0
T21,6 Deployment,Deploy MVP (Streamlit Cloud),2026-11-16,2026-11-16,M5,,Not started,Y,1
M6,6 Deployment,MVP live,2026-11-16,2026-11-16,T21,Y,Not started,Y,0
T22,6 Deployment,User testing (2–3 people),2026-11-17,2026-11-17,M6,,Not started,N,1
T23,6 Deployment,Collect feedback + define next iteration,2026-11-18,2026-11-18,T22,,Not started,N,1
M7,6 Deployment,Portfolio package complete,2026-11-18,2026-11-18,T23,Y,Not started,N,0
